Schedule from MS Project, 2018-12-17 to 2020-01-31.

## Calendars

- Standard: Mon-Fri 08:00-12:00, 13:00-17:00; Sat-Sun off.

## Schedule

| ID | WBS | Task | Duration | Start | Finish | Predecessors | Total slack |
| --- | --- | --- | --- | --- | --- | --- | --- |
| 1 | 1 | **Projekt aplikacji "Chat4B"** | 294.25d | 2018-12-17 | 2020-01-31 |  | 0d |
| 2 | 1.1 | **Etap I - Analiza** | 5.5d | 2018-12-17 | 2018-12-24 |  | 0d |
| 3 | 1.1.1 | Dokumentacja wymagań klienta | 4d | 2018-12-17 | 2018-12-20 |  | 0d |
| 4 | 1.1.2 | Wybór narzędzi programistycznych i technologii | 1d | 2018-12-21 | 2018-12-21 | 3 | 0d |
| 5 | 1.1.3 | Protokół etapu I | 4h | 2018-12-24 | 2018-12-24 | 4 | 0d |
| 6 | 1.2 | **Etap II - Projekt systemu I organizacja** | 23.5d | 2018-12-24 | 2019-01-24 | 2 | 0d |
| 7 | 1.2.1 | Konfiguracja systemu kontrolii wersji | 1d | 2018-12-24 | 2018-12-25 |  | 0d |
| 8 | 1.2.2 | Konfiguracja systemu Continous Integration | 1d | 2018-12-25 | 2018-12-26 | 7 | 0d |
| 9 | 1.2.3 | Instalacja I konfiguracja bazy danych | 2d | 2018-12-26 | 2018-12-28 | 8 | 0d |
| 10 | 1.2.4 | Stworzenie projektu Backend | 3d | 2018-12-28 | 2019-01-02 | 9 | 0d |
| 11 | 1.2.5 | Stworzenie projektu Frontend | 8d | 2019-01-02 | 2019-01-14 | 10 | 0d |
| 12 | 1.2.6 | Stworzenie projektu Android | 8d | 2019-01-14 | 2019-01-24 | 11 | 0d |
| 13 | 1.2.7 | Protokół etapu II | 4h | 2019-01-24 | 2019-01-24 | 12 | 0d |
| 14 | 1.3 | **Etap III - Prototyp** | 74.5d | 2019-01-25 | 2019-05-09 | 6 | 0d |
| 15 | 1.3.1 | Stworzenie struktury bazy danych | 2d | 2019-01-25 | 2019-01-28 |  | 0d |
| 16 | 1.3.2 | Implementacja systemu Backend | 21d | 2019-01-29 | 2019-02-26 | 15 | 0d |
| 17 | 1.3.3 | Implementacja systemu Frontend | 21d | 2019-02-27 | 2019-03-27 | 16 | 0d |
| 18 | 1.3.4 | Implementacja systemu Android | 21d | 2019-03-28 | 2019-04-25 | 17 | 0d |
| 19 | 1.3.5 | Retrospektywa | 1d | 2019-04-26 | 2019-04-26 | 18 | 0d |
| 20 | 1.3.6 | Testy I poprawa krytycznych funkcjonalności | 7d | 2019-04-29 | 2019-05-07 | 19 | 0d |
| 21 | 1.3.7 | Prezentacja postępu klientowi | 1d | 2019-05-08 | 2019-05-08 | 20 | 0d |
| 22 | 1.3.8 | Protokół etapu III | 4h | 2019-05-09 | 2019-05-09 | 21 | 0d |
| 23 | 1.4 | **Etap IV - Produkcja** | 150.5d | 2019-05-09 | 2019-12-05 | 14 | 0d |
| 24 | 1.4.1 | Napisanie testów dla Backend | 10d | 2019-05-09 | 2019-05-23 |  | 0d |
| 25 | 1.4.2 | Implemetnacja zabezpieczeń oraz dodatkowych funkcjonalności - Backend | 30d | 2019-05-23 | 2019-07-04 | 24 | 0d |
| 26 | 1.4.3 | Napisanie testów dla Frontend | 14d | 2019-07-04 | 2019-07-24 | 25 | 0d |
| 27 | 1.4.4 | Dodanie nowych funkcjonalnosci - Frontend | 40d | 2019-07-24 | 2019-09-18 | 26 | 0d |
| 28 | 1.4.5 | Napisanie testów dla Android | 14d | 2019-09-18 | 2019-10-08 | 27 | 0d |
| 29 | 1.4.6 | Dodanie nowych funkcjonalnosci - Android | 40d | 2019-10-08 | 2019-12-03 | 28 | 0d |
| 30 | 1.4.7 | Konsultacje z klientem | 2d | 2019-12-03 | 2019-12-05 | 29 | 0d |
| 31 | 1.4.8 | Protokół etapu IV | 4h | 2019-12-05 | 2019-12-05 | 30 | 0d |

| ID | WBS | Task | Duration | Start | Finish | Predecessors | Total slack |
| --- | --- | --- | --- | --- | --- | --- | --- |
| 32 | 1.5 | **Etap V - Wdrożenie** | 40.25d | 2019-12-06 | 2020-01-31 | 23 | 0d |
| 33 | 1.5.1 | Testy manualne | 7d | 2019-12-06 | 2019-12-16 |  | 0d |
| 34 | 1.5.2 | Optymalizacja oraz refactoring kodu | 14d | 2019-12-17 | 2020-01-03 | 33 | 0d |
| 35 | 1.5.3 | Poprawki kodu | 7d | 2020-01-06 | 2020-01-14 | 34 | 0d |
| 36 | 1.5.4 | Umieszczenie aplikacji w sieci | 2d | 2020-01-15 | 2020-01-16 | 35 | 0d |
| 37 | 1.5.5 | Umieszczenie aplikacji w Android Play | 6h | 2020-01-17 | 2020-01-17 | 36 | 0d |
| 38 | 1.5.6 | Sporządznie dokumentacji projektu | 7d | 2020-01-17 | 2020-01-28 | 37 | 0d |
| 39 | 1.5.7 | Oddanie produktu klientowi | 2d | 2020-01-28 | 2020-01-30 | 38 | 0d |
| 40 | 1.5.8 | Protokół etapu V | 4h | 2020-01-30 | 2020-01-31 | 39 | 0d |
